# uQuad

Schedule from MS Project, 2011-04-08 to 2012-05-30, status date 2011-05-07, 4 hours a day.
Hewlett-Packard

## Calendars

- uQuad! Calendar: Mon-Fri 09:00-13:00, 15:00-19:00; Sat-Sun off. Exceptions (off unless hours are given): 2011-05-02 to 2011-05-06 (Parciales 1º sem 1), 2011-06-27 to 2011-07-08 (Parciales 1º sem 2), 2011-09-26 to 2011-10-01 (Parciales 2º sem 1), 2011-11-21 to 2011-12-03 (Parciales 2º sem 2), 2011-12-23 to 2012-01-13 (Vacaciones).

## Resources

| Resource |
| --- |
| Manuel López |
| Santiago Paternain |
| Rodrigo Rosa |
| Matías Tailanián |
| ML |
| SP |
| RR |
| MT |
| "Matías Tailanián |
| Rodrigo Rosa" |

## Schedule

| ID | Task | Type | Duration | Start | Finish | Predecessors | Total slack | Free slack | Constraint | Resources | Work |
| --- | --- | --- | --- | --- | --- | --- | --- | --- | --- | --- | --- |
| 1 | Elección de la plataforma a utilizar |  | 43d | 2011-04-08 | 2011-05-16 |  | 199d | 0d | finish no earlier than 2011-05-16 | Matías Tailanián; Manuel López; Santiago Paternain; Rodrigo Rosa | 688h |
| 2 | Elección de microprocesador |  | 43d | 2011-04-08 | 2011-05-16 |  | 316d | 0d |  | Matías Tailanián; Manuel López; Santiago Paternain; Rodrigo Rosa | 688h |
| 3 | Elección de instrumentación |  | 43d | 2011-04-08 | 2011-05-16 |  | 316d | 0d |  | Matías Tailanián; Manuel López; Santiago Paternain; Rodrigo Rosa | 688h |
| 4 | Elección de un medio de comunicación con el equipo |  | 43d | 2011-04-08 | 2011-05-16 |  | 370d | 0d |  | Matías Tailanián; Manuel López; Santiago Paternain; Rodrigo Rosa | 688h |
| 5 | Documentación etapa 1 |  | 30d | 2011-05-16 | 2011-06-06 | 1, 2, 3, 4 | 373d | 47d | start no earlier than 2011-05-16 | Matías Tailanián; Manuel López; Santiago Paternain; Rodrigo Rosa | 480h |
| 6 | Caracterización de los motores |  | 18d | 2011-07-11 | 2011-07-21 | 1 | 384d |  | start no earlier than 2011-07-11 | Manuel López; Santiago Paternain | 144h |
| 7 | Diseño de algoritmo de control de motores |  | 37d | 2011-07-22 | 2011-08-17 | 2, 5 | 326d | 21d | start no earlier than 2011-07-22 | Manuel López; Santiago Paternain | 296h |
| 8 | Programación del microprocesador para comunicarse con la instrumentación |  | 40d | 2011-07-11 | 2011-08-05 | 2, 3 | 341d | 36d | start no earlier than 2011-07-11 | Matías Tailanián [50%]; Rodrigo Rosa [50%] | 160h |
| 9 | Implementación de software necesario para la comunicación |  | 40d | 2011-07-11 | 2011-08-05 | 2, 4 | 341d | 36d | start no earlier than 2011-07-11 | Matías Tailanián [50%]; Rodrigo Rosa [50%] | 160h |
| 10 | Armado del dispositivo |  | 18d | 2011-08-17 | 2011-08-29 | 1, 2, 3, 4 | 309d | 4d | start no earlier than 2011-08-17 | Matías Tailanián; Manuel López | 144h |
| 11 | Preparación y documentación del Hito 1 |  | 21d | 2011-09-01 | 2011-09-15 | 9, 7, 8, 10 | 305d | 0d | start no earlier than 2011-09-01 | Matías Tailanián; Manuel López; Santiago Paternain; Rodrigo Rosa | 336h |
| 12 | Hito 1 | milestone | 0d | 2011-09-15 | 2011-09-15 | 11, 13 | 305d |  | start no earlier than 2011-09-15 | Matías Tailanián; Manuel López; Santiago Paternain; Rodrigo Rosa |  |
| 13 | Buffer |  | 21d | 2011-09-01 | 2011-09-15 | 7, 8, 9, 10 | 305d | 0d | start no earlier than 2011-09-01 | Matías Tailanián; Manuel López; Santiago Paternain; Rodrigo Rosa | 336h |
| 14 | Modelado Fisico A |  | 22d | 2011-08-17 | 2011-08-31 | 1 | 86d | 34d | start no earlier than 2011-08-17 | Santiago Paternain | 88h |
| 15 | Modelado Fisico B |  | 9d | 2011-10-03 | 2011-10-07 | 14 | 52d | 1d | start no earlier than 2011-10-03 | Matías Tailanián; Manuel López; Santiago Paternain; Rodrigo Rosa | 144h |
| 16 | Estudio del vuelo |  | 22d | 2011-10-10 | 2011-10-24 | 15 | 51d | 0d | start no earlier than 2011-10-10 | Matías Tailanián; Manuel López; Santiago Paternain; Rodrigo Rosa | 352h |
| 17 | Generador de rutas |  | 40d | 2011-10-25 | 2011-12-05 | 16 | 51d | 0d | start no earlier than 2011-10-25 | Matías Tailanián; Santiago Paternain | 320h |
| 18 | Diseño del simulador |  | 40d | 2011-10-25 | 2011-12-05 | 16 | 91d | 0d | start no earlier than 2011-10-25 | Manuel López; Rodrigo Rosa | 320h |
| 19 | Documentación etapa 3 |  | 30d | 2011-12-06 | 2012-01-17 | 18 | 187d |  | start no earlier than 2011-12-05 | Matías Tailanián; Manuel López; Santiago Paternain; Rodrigo Rosa | 480h |
| 20 | Diseño de algoritmos de control |  | 40d | 2011-12-06 | 2012-01-24 | 16, 17 | 51d | 0d | start no earlier than 2011-12-06 | Matías Tailanián; Manuel López; Santiago Paternain; Rodrigo Rosa | 640h |
| 21 | Simulación, testeo y debugging de algoritmos |  | 14d | 2012-01-25 | 2012-02-02 | 18, 20 | 51d | 0d | start no earlier than 2012-01-25 | Matías Tailanián; Manuel López; Santiago Paternain; Rodrigo Rosa | 224h |
| 22 | Buffer 2 |  | 19d | 2012-02-03 | 2012-02-16 | 20, 21 | 147d | 1d | start no earlier than 2012-02-03 | Matías Tailanián; Manuel López; Santiago Paternain; Rodrigo Rosa | 304h |
| 23 | Preparación y documentaciónb del Hito 2 |  | 20d | 2012-02-03 | 2012-02-16 | 20, 21 | 146d | 0d | start no earlier than 2012-02-03 | Matías Tailanián; Manuel López; Santiago Paternain; Rodrigo Rosa | 320h |
| 24 | Hito 2 | milestone | 0d | 2012-02-16 | 2012-02-16 | 23, 22 | 143d |  | start no earlier than 2012-02-15 | Matías Tailanián; Manuel López; Santiago Paternain; Rodrigo Rosa |  |
| 25 | Programación del microprocesador |  | 63d | 2012-02-17 | 2012-04-02 | 20, 21 | 31d | 28d | start no earlier than 2012-02-17 | Rodrigo Rosa [33.3%]; Manuel López [66.7%] | 252h |
| 26 | Prueba de vuelo y debugging final |  | 30d | 2012-04-20 | 2012-05-11 | 25, 31 | 3d | 0d | start no earlier than 2012-04-02 | Matías Tailanián [75%]; Manuel López [75%]; Santiago Paternain [75%]; Rodrigo Rosa [75%] | 360h |
| 27 | uQuad! (Defensa) |  | 22d | 2012-05-11 | 2012-05-28 | 25, 26 | 3d |  | start no earlier than 2012-04-23 | Matías Tailanián; Manuel López; Santiago Paternain; Rodrigo Rosa | 352h |
| 28 | Defensa | milestone | 0d | 2012-05-30 | 2012-05-30 |  | 0d |  | start no earlier than 2012-05-30 |  |  |
| 29 | Documentación |  | 22d | 2012-05-11 | 2012-05-28 | 25, 26 | 3d |  | start no earlier than 2012-04-23 | Matías Tailanián; Manuel López; Santiago Paternain; Rodrigo Rosa | 352h |
| 30 | Instrumentación del Quadcopter con una sensores adicionales |  | 33d | 2012-02-16 | 2012-03-09 | 1, 2, 3 | 3d | 0d | start no earlier than 2012-02-16 | Matías Tailanián; Santiago Paternain | 264h |
| 31 | Desarrollo de los algoritmos necesarios para llevar a cabo alguna funcionalidad específica |  | 60d | 2012-03-09 | 2012-04-20 | 30 | 3d | 0d | start no earlier than 2012-03-09 | Matías Tailanián [200%]; Santiago Paternain [200%] | 960h |
